# espaciGo — programa académico y transición comercial

Schedule from MS Project XML, 2026-08-11 to 2027-01-01, 4 hours a day.

## Calendars

- Académico nominal 20 h: Mon-Fri 09:00-13:00; Sat-Sun off.

## Resources

| Resource |
| --- |
| Hernán Espinoza Castillo |
| Anita Marchant Pacheco |
| Erick Silva Quezada |

## Schedule

| ID | WBS | Task | Duration | Start | Finish | Predecessors | Resources | Work |
| --- | --- | --- | --- | --- | --- | --- | --- | --- |
| 1 | 1.1.1 | **Acuerdo de gobierno y equipo** | 2d | 2026-08-11 | 2026-08-12 |  |  |  |
| 2 | 1.1.1.1 | G01 — Definir gobierno y acuerdo del equipo | 2d | 2026-08-11 | 2026-08-12 |  | Anita Marchant Pacheco | 8h |
| 3 | 1.1.2 | **Enunciado de alcance y EDT** | 2d | 2026-08-13 | 2026-08-14 |  |  |  |
| 4 | 1.1.2.1 | G02 — Delimitar alcance y descomponer EDT | 2d | 2026-08-13 | 2026-08-14 | 2 | Anita Marchant Pacheco | 8h |
| 5 | 1.1.3 | **Modelo del cronograma** | 76d | 2026-08-13 | 2026-11-26 |  |  |  |
| 6 | 1.1.3.1 | G03 — Preparar calendario y modelo de cronograma | 3d | 2026-08-13 | 2026-08-17 | 2 | Erick Silva Quezada | 12h |
| 7 | 1.1.3.2 | R03 — Revisar red, recursos e hitos del plan | 2d | 2026-11-25 | 2026-11-26 | 70 | Erick Silva Quezada | 8h |
| 8 | 1.1.4 | **Presupuesto y criterios de adquisición** | 2d | 2026-08-17 | 2026-08-18 |  |  |  |
| 9 | 1.1.4.1 | G04 — Identificar presupuesto y adquisiciones | 2d | 2026-08-17 | 2026-08-18 | 4 | Anita Marchant Pacheco | 8h |
| 10 | 1.1.5 | **Registro de riesgos y cambios** | 2d | 2026-08-18 | 2026-08-19 |  |  |  |
| 11 | 1.1.5.1 | G05 — Definir riesgos y control de cambios | 2d | 2026-08-18 | 2026-08-19 | 6 | Erick Silva Quezada | 8h |
| 12 | 1.2.1 | **Diagnóstico y procesos de referencia** | 3d | 2026-08-19 | 2026-08-21 |  |  |  |
| 13 | 1.2.1.1 | A01 — Caracterizar el problema y los procesos | 3d | 2026-08-19 | 2026-08-21 | 4, 9 | Anita Marchant Pacheco | 12h |
| 14 | 1.2.2 | **Especificación funcional** | 5d | 2026-08-24 | 2026-08-28 |  |  |  |
| 15 | 1.2.2.1 | A02 — Especificar requisitos funcionales | 5d | 2026-08-24 | 2026-08-28 | 13 | Anita Marchant Pacheco | 20h |
| 16 | 1.2.3 | **Especificación de calidad** | 3d | 2026-08-24 | 2026-08-26 |  |  |  |
| 17 | 1.2.3.1 | A03 — Especificar requisitos de calidad | 3d | 2026-08-24 | 2026-08-26 | 13, 11 | Erick Silva Quezada | 12h |
| 18 | 1.2.4 | **Historias y casos de uso** | 5d | 2026-08-31 | 2026-09-04 |  |  |  |
| 19 | 1.2.4.1 | A04 — Modelar historias y casos de uso | 5d | 2026-08-31 | 2026-09-04 | 15 | Anita Marchant Pacheco | 20h |
| 20 | 1.2.5 | **Matriz de trazabilidad** | 2d | 2026-09-07 | 2026-09-08 |  |  |  |
| 21 | 1.2.5.1 | A05 — Relacionar requisitos, casos y pruebas | 2d | 2026-09-07 | 2026-09-08 | 19, 17 | Anita Marchant Pacheco | 8h |
| 22 | 1.3.1 | **Vistas de arquitectura empresarial** | 2d | 2026-08-18 | 2026-08-19 |  |  |  |
| 23 | 1.3.1.1 | D01 — Definir vistas de arquitectura empresarial | 2d | 2026-08-18 | 2026-08-19 | 4, 6 | Hernán Espinoza Castillo | 8h |
| 24 | 1.3.2 | **Arquitectura de software** | 3d | 2026-08-20 | 2026-08-24 |  |  |  |
| 25 | 1.3.2.1 | D02 — Diseñar dominio y adaptadores | 3d | 2026-08-20 | 2026-08-24 | 23 | Hernán Espinoza Castillo | 12h |

Notes:
- 1: EDT 1.1.1; tarea resumen sin asignación ni trabajo imputado.
- 2: ID estable: G01; EDT: 1.1.1; Programación de referencia; ejecución no deducida de las fechas. Las horas son estimadas y no acreditan trabajo real ni remuneración.
- 3: EDT 1.1.2; tarea resumen sin asignación ni trabajo imputado.
- 4: ID estable: G02; EDT: 1.1.2; Programación de referencia; ejecución no deducida de las fechas. Las horas son estimadas y no acreditan trabajo real ni remuneración.
- 5: EDT 1.1.3; tarea resumen sin asignación ni trabajo imputado.
- 6: ID estable: G03; EDT: 1.1.3; Programación de referencia; ejecución no deducida de las fechas. Las horas son estimadas y no acreditan trabajo real ni remuneración.
- 7: ID estable: R03; EDT: 1.1.3; Programación de referencia; ejecución no deducida de las fechas. Las horas son estimadas y no acreditan trabajo real ni remuneración.
- 8: EDT 1.1.4; tarea resumen sin asignación ni trabajo imputado.
- 9: ID estable: G04; EDT: 1.1.4; Programación de referencia; ejecución no deducida de las fechas. Las horas son estimadas y no acreditan trabajo real ni remuneración.
- 10: EDT 1.1.5; tarea resumen sin asignación ni trabajo imputado.
- 11: ID estable: G05; EDT: 1.1.5; Programación de referencia; ejecución no deducida de las fechas. Las horas son estimadas y no acreditan trabajo real ni remuneración.
- 12: EDT 1.2.1; tarea resumen sin asignación ni trabajo imputado.
- 13: ID estable: A01; EDT: 1.2.1; Programación de referencia; ejecución no deducida de las fechas. Las horas son estimadas y no acreditan trabajo real ni remuneración.
- 14: EDT 1.2.2; tarea resumen sin asignación ni trabajo imputado.
- 15: ID estable: A02; EDT: 1.2.2; Programación de referencia; ejecución no deducida de las fechas. Las horas son estimadas y no acreditan trabajo real ni remuneración.
- 16: EDT 1.2.3; tarea resumen sin asignación ni trabajo imputado.
- 17: ID estable: A03; EDT: 1.2.3; Programación de referencia; ejecución no deducida de las fechas. Las horas son estimadas y no acreditan trabajo real ni remuneración.
- 18: EDT 1.2.4; tarea resumen sin asignación ni trabajo imputado.
- 19: ID estable: A04; EDT: 1.2.4; Programación de referencia; ejecución no deducida de las fechas. Las horas son estimadas y no acreditan trabajo real ni remuneración.
- 20: EDT 1.2.5; tarea resumen sin asignación ni trabajo imputado.
- 21: ID estable: A05; EDT: 1.2.5; Programación de referencia; ejecución no deducida de las fechas. Las horas son estimadas y no acreditan trabajo real ni remuneración.
- 22: EDT 1.3.1; tarea resumen sin asignación ni trabajo imputado.
- 23: ID estable: D01; EDT: 1.3.1; Programación de referencia; ejecución no deducida de las fechas. Las horas son estimadas y no acreditan trabajo real ni remuneración.
- 24: EDT 1.3.2; tarea resumen sin asignación ni trabajo imputado.
- 25: ID estable: D02; EDT: 1.3.2; Programación de referencia; ejecución no deducida de las fechas. Las horas son estimadas y no acreditan trabajo real ni remuneración.

| ID | WBS | Task | Duration | Start | Finish | Predecessors | Resources | Work |
| --- | --- | --- | --- | --- | --- | --- | --- | --- |
| 26 | 1.3.3 | **Modelo relacional y geoespacial** | 5d | 2026-08-25 | 2026-08-31 |  |  |  |
| 27 | 1.3.3.1 | D03 — Modelar datos y restricciones geoespaciales | 5d | 2026-08-25 | 2026-08-31 | 25 | Hernán Espinoza Castillo | 20h |
| 28 | 1.3.4 | **Diseño de seguridad y privacidad** | 3d | 2026-08-27 | 2026-08-31 |  |  |  |
| 29 | 1.3.4.1 | D04 — Diseñar sesiones, permisos y privacidad | 3d | 2026-08-27 | 2026-08-31 | 25, 17 | Erick Silva Quezada | 12h |
| 30 | 1.3.5 | **Contratos de interfaz** | 3d | 2026-09-01 | 2026-09-03 |  |  |  |
| 31 | 1.3.5.1 | D05 — Especificar operaciones de interfaz | 3d | 2026-09-01 | 2026-09-03 | 27, 29 | Hernán Espinoza Castillo | 12h |
| 32 | 1.4.1 | **Incremento de identidad y acceso** | 9d | 2026-09-04 | 2026-09-16 |  |  |  |
| 33 | 1.4.1.1 | I1H — Construir cuenta, perfil y control de acceso | 8d | 2026-09-04 | 2026-09-15 | 31, 72 | Hernán Espinoza Castillo | 32h |
| 34 | 1.4.1.2 | I1A — Construir pantallas de cuenta y perfil | 6d | 2026-09-09 | 2026-09-16 | 31, 19, 21 | Anita Marchant Pacheco | 24h |
| 35 | 1.4.1.3 | I1E — Definir verificación de identidad controlada | 2d | 2026-09-04 | 2026-09-07 | 29, 72 | Erick Silva Quezada | 8h |
| 36 | 1.4.2 | **Incremento de catálogo y búsqueda** | 10d | 2026-09-21 | 2026-10-02 |  |  |  |
| 37 | 1.4.2.1 | I2H — Construir publicación y disponibilidad | 6d | 2026-09-21 | 2026-09-28 | 54, 33 | Hernán Espinoza Castillo | 24h |
| 38 | 1.4.2.2 | I2B — Construir búsqueda y cotización PostGIS | 4d | 2026-09-29 | 2026-10-02 | 37 | Hernán Espinoza Castillo | 16h |
| 39 | 1.4.2.3 | I2A — Construir catálogo, mapa y detalle | 6d | 2026-09-21 | 2026-09-28 | 54, 80 | Anita Marchant Pacheco | 24h |
| 40 | 1.4.3 | **Incremento de contratación y cobros** | 9d | 2026-10-07 | 2026-10-19 |  |  |  |
| 41 | 1.4.3.1 | I3H — Construir aceptación y ocupación exclusiva | 6d | 2026-10-07 | 2026-10-14 | 56, 38 | Hernán Espinoza Castillo | 24h |
| 42 | 1.4.3.2 | I3B — Construir conciliación y pagos controlados | 3d | 2026-10-15 | 2026-10-19 | 41 | Hernán Espinoza Castillo | 12h |
| 43 | 1.4.3.3 | I3A — Construir recorrido de acuerdo y cobro | 5d | 2026-10-07 | 2026-10-13 | 56, 83 | Anita Marchant Pacheco | 20h |
| 44 | 1.4.4 | **Incremento documental y avisos** | 6d | 2026-10-22 | 2026-10-29 |  |  |  |
| 45 | 1.4.4.1 | I4H — Construir documentos, avisos y evidencias | 6d | 2026-10-22 | 2026-10-29 | 58, 42 | Hernán Espinoza Castillo | 24h |
| 46 | 1.4.4.2 | I4A — Construir vistas documentales y entrega | 5d | 2026-10-22 | 2026-10-28 | 58, 43 | Anita Marchant Pacheco | 20h |
| 47 | 1.4.4.3 | I4E — Definir aceptación de firma opcional | 2d | 2026-10-22 | 2026-10-23 | 58, 57 | Erick Silva Quezada | 8h |
| 48 | 1.4.5 | **Incremento de administración y auditoría** | 7d | 2026-11-03 | 2026-11-11 |  |  |  |
| 49 | 1.4.5.1 | I5H — Construir administración e incidencias | 5d | 2026-11-03 | 2026-11-09 | 60, 45 | Hernán Espinoza Castillo | 20h |
| 50 | 1.4.5.2 | I5A — Construir vistas de administración | 4d | 2026-11-03 | 2026-11-06 | 60, 46 | Anita Marchant Pacheco | 16h |
| 51 | 1.4.5.3 | I5E — Revisar autorización y registro de auditoría | 2d | 2026-11-10 | 2026-11-11 | 49, 59 | Erick Silva Quezada | 8h |

Notes:
- 26: EDT 1.3.3; tarea resumen sin asignación ni trabajo imputado.
- 27: ID estable: D03; EDT: 1.3.3; Programación de referencia; ejecución no deducida de las fechas. Las horas son estimadas y no acreditan trabajo real ni remuneración.
- 28: EDT 1.3.4; tarea resumen sin asignación ni trabajo imputado.
- 29: ID estable: D04; EDT: 1.3.4; Programación de referencia; ejecución no deducida de las fechas. Las horas son estimadas y no acreditan trabajo real ni remuneración.
- 30: EDT 1.3.5; tarea resumen sin asignación ni trabajo imputado.
- 31: ID estable: D05; EDT: 1.3.5; Programación de referencia; ejecución no deducida de las fechas. Las horas son estimadas y no acreditan trabajo real ni remuneración.
- 32: EDT 1.4.1; tarea resumen sin asignación ni trabajo imputado.
- 33: ID estable: I1H; EDT: 1.4.1; Programación de referencia; ejecución no deducida de las fechas. Las horas son estimadas y no acreditan trabajo real ni remuneración.
- 34: ID estable: I1A; EDT: 1.4.1; Programación de referencia; ejecución no deducida de las fechas. Las horas son estimadas y no acreditan trabajo real ni remuneración.
- 35: ID estable: I1E; EDT: 1.4.1; Programación de referencia; ejecución no deducida de las fechas. Las horas son estimadas y no acreditan trabajo real ni remuneración.
- 36: EDT 1.4.2; tarea resumen sin asignación ni trabajo imputado.
- 37: ID estable: I2H; EDT: 1.4.2; Programación de referencia; ejecución no deducida de las fechas. Las horas son estimadas y no acreditan trabajo real ni remuneración.
- 38: ID estable: I2B; EDT: 1.4.2; Programación de referencia; ejecución no deducida de las fechas. Las horas son estimadas y no acreditan trabajo real ni remuneración.
- 39: ID estable: I2A; EDT: 1.4.2; Programación de referencia; ejecución no deducida de las fechas. Las horas son estimadas y no acreditan trabajo real ni remuneración.
- 40: EDT 1.4.3; tarea resumen sin asignación ni trabajo imputado.
- 41: ID estable: I3H; EDT: 1.4.3; Programación de referencia; ejecución no deducida de las fechas. Las horas son estimadas y no acreditan trabajo real ni remuneración.
- 42: ID estable: I3B; EDT: 1.4.3; Programación de referencia; ejecución no deducida de las fechas. Las horas son estimadas y no acreditan trabajo real ni remuneración.
- 43: ID estable: I3A; EDT: 1.4.3; Programación de referencia; ejecución no deducida de las fechas. Las horas son estimadas y no acreditan trabajo real ni remuneración.
- 44: EDT 1.4.4; tarea resumen sin asignación ni trabajo imputado.
- 45: ID estable: I4H; EDT: 1.4.4; Programación de referencia; ejecución no deducida de las fechas. Las horas son estimadas y no acreditan trabajo real ni remuneración.
- 46: ID estable: I4A; EDT: 1.4.4; Programación de referencia; ejecución no deducida de las fechas. Las horas son estimadas y no acreditan trabajo real ni remuneración.
- 47: ID estable: I4E; EDT: 1.4.4; Programación de referencia; ejecución no deducida de las fechas. Las horas son estimadas y no acreditan trabajo real ni remuneración.
- 48: EDT 1.4.5; tarea resumen sin asignación ni trabajo imputado.
- 49: ID estable: I5H; EDT: 1.4.5; Programación de referencia; ejecución no deducida de las fechas. Las horas son estimadas y no acreditan trabajo real ni remuneración.
- 50: ID estable: I5A; EDT: 1.4.5; Programación de referencia; ejecución no deducida de las fechas. Las horas son estimadas y no acreditan trabajo real ni remuneración.
- 51: ID estable: I5E; EDT: 1.4.5; Programación de referencia; ejecución no deducida de las fechas. Las horas son estimadas y no acreditan trabajo real ni remuneración.

| ID | WBS | Task | Type | Duration | Start | Finish | Predecessors | Constraint | Resources | Work |
| --- | --- | --- | --- | --- | --- | --- | --- | --- | --- | --- |
| 52 | 1.5.1 | **Verificación de incrementos** |  | 53d | 2026-09-17 | 2026-11-30 |  |  |  |  |
| 53 | 1.5.1.1 | Q01 — Verificar integración de identidad |  | 2d | 2026-09-17 | 2026-09-18 | 33, 34, 35 |  | Erick Silva Quezada | 8h |
| 54 | 1.5.1.2 | M01 — Incremento 1 integrado | milestone | 0d | 2026-09-18 | 2026-09-18 | 53 |  |  |  |
| 55 | 1.5.1.3 | Q02 — Verificar catálogo y búsqueda integrada |  | 2d | 2026-10-05 | 2026-10-06 | 38, 39, 53 |  | Erick Silva Quezada | 8h |
| 56 | 1.5.1.4 | M02 — Incremento 2 integrado | milestone | 0d | 2026-10-06 | 2026-10-06 | 55 |  |  |  |
| 57 | 1.5.1.5 | Q03 — Verificar renta y comisión por separado |  | 2d | 2026-10-20 | 2026-10-21 | 42, 43, 66 |  | Erick Silva Quezada | 8h |
| 58 | 1.5.1.6 | M03 — Incremento 3 integrado | milestone | 0d | 2026-10-21 | 2026-10-21 | 57 |  |  |  |
| 59 | 1.5.1.7 | Q04 — Verificar documentos y entrega controlada |  | 2d | 2026-10-30 | 2026-11-02 | 45, 46, 47, 68 |  | Erick Silva Quezada | 8h |
| 60 | 1.5.1.8 | M04 — Incremento 4 integrado | milestone | 0d | 2026-11-02 | 2026-11-02 | 59 |  |  |  |
| 61 | 1.5.1.9 | Q05 — Verificar incremento de administración |  | 2d | 2026-11-12 | 2026-11-13 | 51, 50 |  | Erick Silva Quezada | 8h |
| 62 | 1.5.1.10 | M05 — Incremento 5 integrado | milestone | 0d | 2026-11-13 | 2026-11-13 | 61 |  |  |  |
| 63 | 1.5.1.11 | Q09 — Conciliar aceptación del corte académico |  | 2d | 2026-11-25 | 2026-11-26 | 70, 62, 84 |  | Hernán Espinoza Castillo | 8h |
| 64 | 1.5.1.12 | C0 — Corte académico preparado | milestone | 0d | 2026-11-30 | 2026-11-30 | 85 |  |  |  |
| 65 | 1.5.2 | **Evaluación de rendimiento** |  | 2d | 2026-10-07 | 2026-10-08 |  |  |  |  |
| 66 | 1.5.2.1 | Q06 — Revisar rendimiento local y plan integrado |  | 2d | 2026-10-07 | 2026-10-08 | 56, 55 |  | Erick Silva Quezada | 8h |
| 67 | 1.5.3 | **Evaluación de recuperación** |  | 2d | 2026-10-26 | 2026-10-27 |  |  |  |  |
| 68 | 1.5.3.1 | Q07 — Revisar recuperación local y criterios RPO/RTO |  | 2d | 2026-10-26 | 2026-10-27 | 58, 47 |  | Erick Silva Quezada | 8h |
| 69 | 1.5.4 | **Verificación de ciberseguridad** |  | 2d | 2026-11-23 | 2026-11-24 |  |  |  |  |
| 70 | 1.5.4.1 | Q08 — Revisar permisos, regresión y hallazgos |  | 2d | 2026-11-23 | 2026-11-24 | 62, 66, 68, 74 |  | Erick Silva Quezada | 8h |
| 71 | 1.6.1 | **Configuración y entrega técnica** |  | 76d | 2026-09-01 | 2026-12-15 |  |  |  |  |
| 72 | 1.6.1.1 | L01 — Preparar contenedores y calidad local |  | 3d | 2026-09-01 | 2026-09-03 | 6, 25, 29 |  | Erick Silva Quezada | 12h |
| 73 | 1.6.1.2 | W01 — Conciliar diseño con decisión AWS |  | 2d | 2026-11-16 | 2026-11-17 | 31, 49 | start no earlier than 2026-11-16 | Hernán Espinoza Castillo | 8h |
| 74 | 1.6.1.3 | W02 — Revisar adaptadores e IaC del corte AWS |  | 3d | 2026-11-18 | 2026-11-20 | 73, 72, 61 | start no earlier than 2026-11-16 | Erick Silva Quezada | 12h |
| 75 | 1.6.1.4 | TPH — Verificar condiciones técnicas del piloto |  | 3d | 2026-12-10 | 2026-12-14 | 90, 87 | start no earlier than 2026-12-10 | Hernán Espinoza Castillo | 12h |
| 76 | 1.6.1.5 | TPE — Preparar ensayo de despliegue y proveedores |  | 4d | 2026-12-10 | 2026-12-15 | 90, 89 | start no earlier than 2026-12-10 | Erick Silva Quezada | 16h |

Notes:
- 52: EDT 1.5.1; tarea resumen sin asignación ni trabajo imputado.
- 53: ID estable: Q01; EDT: 1.5.1; Programación de referencia; ejecución no deducida de las fechas. Las horas son estimadas y no acreditan trabajo real ni remuneración.
- 54: ID estable: M01; EDT: 1.5.1; Hito programado; aceptación real documentada por separado. Las horas son estimadas y no acreditan trabajo real ni remuneración.
- 55: ID estable: Q02; EDT: 1.5.1; Programación de referencia; ejecución no deducida de las fechas. Las horas son estimadas y no acreditan trabajo real ni remuneración.
- 56: ID estable: M02; EDT: 1.5.1; Hito programado; aceptación real documentada por separado. Las horas son estimadas y no acreditan trabajo real ni remuneración.
- 57: ID estable: Q03; EDT: 1.5.1; Programación de referencia; ejecución no deducida de las fechas. Las horas son estimadas y no acreditan trabajo real ni remuneración.
- 58: ID estable: M03; EDT: 1.5.1; Hito programado; aceptación real documentada por separado. Las horas son estimadas y no acreditan trabajo real ni remuneración.
- 59: ID estable: Q04; EDT: 1.5.1; Programación de referencia; ejecución no deducida de las fechas. Las horas son estimadas y no acreditan trabajo real ni remuneración.
- 60: ID estable: M04; EDT: 1.5.1; Hito programado; aceptación real documentada por separado. Las horas son estimadas y no acreditan trabajo real ni remuneración.
- 61: ID estable: Q05; EDT: 1.5.1; Programación de referencia; ejecución no deducida de las fechas. Las horas son estimadas y no acreditan trabajo real ni remuneración.
- 62: ID estable: M05; EDT: 1.5.1; Hito programado; aceptación real documentada por separado. Las horas son estimadas y no acreditan trabajo real ni remuneración.
- 63: ID estable: Q09; EDT: 1.5.1; Programación de referencia; ejecución no deducida de las fechas. Las horas son estimadas y no acreditan trabajo real ni remuneración.
- 64: ID estable: C0; EDT: 1.5.1; Hito programado; aceptación real documentada por separado. Las horas son estimadas y no acreditan trabajo real ni remuneración.
- 65: EDT 1.5.2; tarea resumen sin asignación ni trabajo imputado.
- 66: ID estable: Q06; EDT: 1.5.2; Programación de referencia; ejecución no deducida de las fechas. Las horas son estimadas y no acreditan trabajo real ni remuneración.
- 67: EDT 1.5.3; tarea resumen sin asignación ni trabajo imputado.
- 68: ID estable: Q07; EDT: 1.5.3; Programación de referencia; ejecución no deducida de las fechas. Las horas son estimadas y no acreditan trabajo real ni remuneración.
- 69: EDT 1.5.4; tarea resumen sin asignación ni trabajo imputado.
- 70: ID estable: Q08; EDT: 1.5.4; Programación de referencia; ejecución no deducida de las fechas. Las horas son estimadas y no acreditan trabajo real ni remuneración.
- 71: EDT 1.6.1; tarea resumen sin asignación ni trabajo imputado.
- 72: ID estable: L01; EDT: 1.6.1; Programación de referencia; ejecución no deducida de las fechas. Las horas son estimadas y no acreditan trabajo real ni remuneración.
- 73: ID estable: W01; EDT: 1.6.1; Programación de referencia; ejecución no deducida de las fechas. Las horas son estimadas y no acreditan trabajo real ni remuneración.
- 74: ID estable: W02; EDT: 1.6.1; Programación de referencia; ejecución no deducida de las fechas. Las horas son estimadas y no acreditan trabajo real ni remuneración.
- 75: ID estable: TPH; EDT: 1.6.1; Programación de referencia; ejecución no deducida de las fechas. Las horas son estimadas y no acreditan trabajo real ni remuneración.
- 76: ID estable: TPE; EDT: 1.6.1; Programación de referencia; ejecución no deducida de las fechas. Las horas son estimadas y no acreditan trabajo real ni remuneración.

| ID | WBS | Task | Type | Duration | Start | Finish | Predecessors | Constraint | Deadline | Resources | Work |
| --- | --- | --- | --- | --- | --- | --- | --- | --- | --- | --- | --- |
| 77 | 1.6.2 | **Evaluación económica** |  | 4d | 2026-11-16 | 2026-11-19 |  |  |  |  |  |
| 78 | 1.6.2.1 | F01 — Conciliar flujos y sensibilidad financiera |  | 4d | 2026-11-16 | 2026-11-19 | 9, 21, 50 | start no earlier than 2026-11-16 |  | Anita Marchant Pacheco | 16h |
| 79 | 1.6.3 | **Preparación societaria y tributaria** |  | 63d | 2026-09-17 | 2026-12-14 |  |  |  |  |  |
| 80 | 1.6.3.1 | F02 — Definir preparación societaria y presupuesto |  | 1d | 2026-09-17 | 2026-09-17 | 9, 34 |  |  | Anita Marchant Pacheco | 4h |
| 81 | 1.6.3.2 | TPA — Preparar formalización y captación inicial |  | 3d | 2026-12-10 | 2026-12-14 | 90, 88 | start no earlier than 2026-12-10 |  | Anita Marchant Pacheco | 12h |
| 82 | 1.6.4 | **Informe, demostración y defensa** |  | 69d | 2026-09-29 | 2027-01-01 |  |  |  |  |  |
| 83 | 1.6.4.1 | R01 — Redactar y revisar capítulos y anexos |  | 6d | 2026-09-29 | 2026-10-06 | 21, 39 |  |  | Anita Marchant Pacheco | 24h |
| 84 | 1.6.4.2 | R02 — Revisar trazabilidad de arquitectura y datos |  | 2d | 2026-11-18 | 2026-11-19 | 62, 73 |  |  | Hernán Espinoza Castillo | 8h |
| 85 | 1.6.4.3 | R04 — Integrar informe y evidencia de entrega |  | 2d | 2026-11-27 | 2026-11-30 | 78, 80, 83, 84, 7, 63 |  |  | Anita Marchant Pacheco | 8h |
| 86 | 1.6.4.4 | ENT — Entrega de proyecto e informe | milestone | 0d | 2026-12-01 | 2026-12-01 | 64 | start no earlier than 2026-12-01 | 2026-12-01 |  |  |
| 87 | 1.6.4.5 | DFH — Estabilizar demostración técnica |  | 3d | 2026-12-02 | 2026-12-04 | 86, 63 | start no earlier than 2026-12-02 |  | Hernán Espinoza Castillo | 12h |
| 88 | 1.6.4.6 | DFA — Preparar presentación y revisión de informe |  | 3d | 2026-12-02 | 2026-12-04 | 86, 85 | start no earlier than 2026-12-02 |  | Anita Marchant Pacheco | 12h |
| 89 | 1.6.4.7 | DFE — Revisar entorno de demostración y contingencias |  | 3d | 2026-12-02 | 2026-12-04 | 86, 7 | start no earlier than 2026-12-02 |  | Erick Silva Quezada | 12h |
| 90 | 1.6.4.8 | DEF — Defensa de título | milestone | 0d | 2026-12-09 | 2026-12-09 | 87, 88, 89 | start no earlier than 2026-12-09 | 2026-12-09 |  |  |
| 91 | 1.6.4.9 | COM — Inicio de fase comercial | milestone | 0d | 2027-01-01 | 2027-01-01 | 75, 81, 76 | start no earlier than 2027-01-01 | 2027-01-01 |  |  |

Notes:
- 77: EDT 1.6.2; tarea resumen sin asignación ni trabajo imputado.
- 78: ID estable: F01; EDT: 1.6.2; Programación de referencia; ejecución no deducida de las fechas. Las horas son estimadas y no acreditan trabajo real ni remuneración.
- 79: EDT 1.6.3; tarea resumen sin asignación ni trabajo imputado.
- 80: ID estable: F02; EDT: 1.6.3; Programación de referencia; ejecución no deducida de las fechas. Las horas son estimadas y no acreditan trabajo real ni remuneración.
- 81: ID estable: TPA; EDT: 1.6.3; Programación de referencia; ejecución no deducida de las fechas. Las horas son estimadas y no acreditan trabajo real ni remuneración.
- 82: EDT 1.6.4; tarea resumen sin asignación ni trabajo imputado.
- 83: ID estable: R01; EDT: 1.6.4; Programación de referencia; ejecución no deducida de las fechas. Las horas son estimadas y no acreditan trabajo real ni remuneración.
- 84: ID estable: R02; EDT: 1.6.4; Programación de referencia; ejecución no deducida de las fechas. Las horas son estimadas y no acreditan trabajo real ni remuneración.
- 85: ID estable: R04; EDT: 1.6.4; Programación de referencia; ejecución no deducida de las fechas. Las horas son estimadas y no acreditan trabajo real ni remuneración.
- 86: ID estable: ENT; EDT: 1.6.4; Hito programado; aceptación real documentada por separado. Las horas son estimadas y no acreditan trabajo real ni remuneración.
- 87: ID estable: DFH; EDT: 1.6.4; Programación de referencia; ejecución no deducida de las fechas. Las horas son estimadas y no acreditan trabajo real ni remuneración.
- 88: ID estable: DFA; EDT: 1.6.4; Programación de referencia; ejecución no deducida de las fechas. Las horas son estimadas y no acreditan trabajo real ni remuneración.
- 89: ID estable: DFE; EDT: 1.6.4; Programación de referencia; ejecución no deducida de las fechas. Las horas son estimadas y no acreditan trabajo real ni remuneración.
- 90: ID estable: DEF; EDT: 1.6.4; Hito programado; aceptación real documentada por separado. Las horas son estimadas y no acreditan trabajo real ni remuneración.
- 91: ID estable: COM; EDT: 1.6.4; Hito programado; aceptación real documentada por separado. Las horas son estimadas y no acreditan trabajo real ni remuneración.
